# Console

Schedule from MS Project, 2009-12-06 to 2010-08-04, A marks actual dates.

## Calendars

- Standard: Mon-Sun 08:00-12:00, 13:00-17:00.

## Resources

| Resource |
| --- |
| Francois Gervais |
| Sébastien Fournier |
| Simon Brassard |
| Alexandre Duperré |
| Steeve Simard |
| Émile Bergeron |
| Équipe Montréal |
| Équipe Chicoutimi |
| Jimmy Vaillancourt |

## Schedule

| ID | WBS | Task | Duration | Start | Finish | Predecessors | Complete | Remaining | Total slack | Constraint | Resources | Work | Actual work |
| --- | --- | --- | --- | --- | --- | --- | --- | --- | --- | --- | --- | --- | --- |
| 1 | 1 | Analyse de la problématique | 1d? | 2009-12-06 A | 2009-12-06 A |  | 100% |  |  |  |  |  |  |
| 2 | 2 | **Choix d'une solution** | 21d? | 2009-12-06 A | 2009-12-26 A |  | 100% |  |  |  |  | 168h | 168h |
| 3 | 2.1 | Choix du micro-controlleur | 21d? | 2009-12-06 A | 2009-12-26 A |  | 100% |  |  | finish no earlier than 2009-12-26 | Francois Gervais | 168h | 168h |
| 4 | 3 | **Réalisation** | 221d? | 2009-12-27 A | 2010-08-04 | 3 | 41% | 129.37d? | 0d |  |  | 4688h | 2475.78h |
| 5 | 3.1 | **Développement bas niveau** | 210d? | 2009-12-27 A | 2010-07-24 |  | 56% | 93.33d? | 11d |  |  | 856h | 600h |
| 6 | 3.1.1 | Programmation du "bootstrap" | 1d? | 2009-12-27 A | 2009-12-27 A |  | 100% |  |  |  | Francois Gervais | 8h | 8h |
| 7 | 3.1.2 | Adaptation du Makefile | 1d? | 2009-12-31 A | 2009-12-31 A | 3 | 100% |  |  | start no earlier than 2009-12-31 | Francois Gervais | 8h | 8h |
| 8 | 3.1.3 | Adaptation du linker script | 1d? | 2010-01-02 A | 2010-01-02 A | 3 | 100% |  |  | start no earlier than 2010-01-02 | Francois Gervais | 8h | 8h |
| 9 | 3.1.4 | Intégration des GPIO à la couche d'abstraction | 3d? | 2010-01-07 A | 2010-01-09 A | 8, 7, 6 | 100% |  |  | finish no earlier than 2010-01-09 | Francois Gervais | 24h | 24h |
| 10 | 3.1.5 | Configuration du PLL | 1d? | 2010-01-09 A | 2010-01-09 A |  | 100% |  |  | start no earlier than 2010-01-09 | Francois Gervais | 8h | 8h |
| 11 | 3.1.6 | Configuration des interruptions | 10d? | 2010-01-13 A | 2010-01-22 A |  | 100% |  |  | finish no earlier than 2010-01-22 | Francois Gervais | 80h | 80h |
| 12 | 3.1.7 | Initialisation du module USB | 4d? | 2010-01-22 A | 2010-01-25 A |  | 100% |  |  | finish no earlier than 2010-01-25 | Francois Gervais | 32h | 32h |
| 13 | 3.1.8 | Attente de réception de la carte de développement | 24d? | 2010-01-25 A | 2010-02-17 A |  | 100% |  |  | finish no earlier than 2010-02-17 | Francois Gervais | 192h | 192h |
| 14 | 3.1.9 | Test de la section Gpio | 1d? | 2010-02-18 A | 2010-02-18 A | 13 | 100% |  |  | start no earlier than 2010-02-18 | Francois Gervais | 8h | 8h |
| 15 | 3.1.10 | Test de l'initialisation USB | 1d? | 2010-02-21 A | 2010-02-21 A |  | 100% |  |  | start no earlier than 2010-02-21 | Francois Gervais | 8h | 8h |
| 16 | 3.1.11 | Programmation du module LCD | 4d? | 2010-02-22 A | 2010-02-25 A |  | 100% |  |  | finish no earlier than 2010-02-25 | Francois Gervais | 32h | 32h |
| 17 | 3.1.12 | Programmation du module SDRAM | 2d? | 2010-02-24 A | 2010-02-25 A |  | 100% |  |  | finish no earlier than 2010-02-25 | Francois Gervais | 16h | 16h |
| 18 | 3.1.13 | Implémentation de la class DisplayHelper pour l'affichage d'image | 2d? | 2010-02-26 A | 2010-02-27 A | 17, 16 | 100% |  |  | finish no earlier than 2010-02-27 | Francois Gervais | 16h | 16h |
| 19 | 3.1.14 | Test d'une image animée sur le LCD | 1d? | 2010-02-28 A | 2010-02-28 A |  | 100% |  |  | start no earlier than 2010-02-28 | Francois Gervais | 8h | 8h |
| 20 | 3.1.15 | Travail sur l'affichage de police à l'écran | 4d? | 2010-03-05 A | 2010-03-08 A |  | 100% |  |  | finish no earlier than 2010-03-08 | Francois Gervais | 32h | 32h |
| 21 | 3.1.16 | Modification de la configuration du PLL | 1d? | 2010-03-23 A | 2010-03-23 A |  | 100% |  |  | start no earlier than 2010-03-23 | Francois Gervais | 8h | 8h |
| 22 | 3.1.17 | Configuration du module pour carte SD | 3d? | 2010-03-25 A | 2010-03-27 A |  | 100% |  |  | finish no earlier than 2010-03-27 | Francois Gervais | 24h | 24h |
| 23 | 3.1.18 | Implémentation du support FAT32 | 3d? | 2010-03-25 A | 2010-03-27 A |  | 100% |  |  | finish no earlier than 2010-03-27 | Francois Gervais | 24h | 24h |
| 24 | 3.1.19 | Prise en charge des fichier Bitmap | 1d? | 2010-03-30 A | 2010-03-30 A |  | 100% |  |  | start no earlier than 2010-03-30 | Francois Gervais | 8h | 8h |
| 25 | 3.1.20 | Gestion du sons (sync) | 1d? | 2010-04-03 A | 2010-04-03 A |  | 100% |  |  | start no earlier than 2010-04-03 | Francois Gervais | 8h | 8h |
| 26 | 3.1.21 | Prise en charge des fichier Wave | 1d? | 2010-04-03 A | 2010-04-03 A |  | 100% |  |  | start no earlier than 2010-04-03 | Francois Gervais | 8h | 8h |
| 27 | 3.1.22 | Travail sur le DMA | 1d? | 2010-03-13 A | 2010-03-13 A |  | 100% |  |  | start no earlier than 2010-03-13 | Francois Gervais | 8h | 8h |
| 28 | 3.1.23 | Gestion du sons (async) | 2d? | 2010-05-23 A | 2010-05-24 A |  | 100% |  |  | finish no earlier than 2010-05-24 | Francois Gervais | 16h | 16h |
| 29 | 3.1.24 | Intégration des timers dans la couche d'abstraction | 2d? | 2010-05-23 A | 2010-05-24 A |  | 100% |  |  | finish no earlier than 2010-05-24 | Francois Gervais | 16h | 16h |
| 30 | 3.1.25 | Prise en charge du USB | 25d? | 2010-05-26 | 2010-06-19 |  |  |  | 46d | start no earlier than 2010-05-26 | Francois Gervais | 200h |  |
| 31 | 3.1.26 | Contrôlleur Xbox360 | 7d? | 2010-06-20 | 2010-06-26 |  |  |  | 39d | finish no earlier than 2010-06-26 | Francois Gervais | 56h |  |
| 32 | 3.1.27 | Découplage du moteur et du noyau | 14d? | 2010-06-27 | 2010-07-10 |  |  |  | 25d | finish no earlier than 2010-07-10 |  |  |  |
| 33 | 3.1.28 | Optimisation | 7d? | 2010-07-11 | 2010-07-17 |  |  |  | 18d | finish no earlier than 2010-07-17 |  |  |  |
| 34 | 3.1.29 | Intégration de FreeRTOS (au besoin) | 7d? | 2010-07-18 | 2010-07-24 |  |  |  | 11d | finish no earlier than 2010-07-24 |  |  |  |

| ID | WBS | Task | Duration | Start | Finish | Predecessors | Complete | Remaining | Total slack | Free slack | Constraint | Deadline | Resources | Work | Actual work |
| --- | --- | --- | --- | --- | --- | --- | --- | --- | --- | --- | --- | --- | --- | --- | --- |
| 35 | 3.2 | **Développement du moteur de jeux** | 203d? | 2009-12-27 A | 2010-07-17 |  | 85% | 29.53d? | 18d |  |  |  | Francois Gervais | 2008h | 1763.78h |
| 36 | 3.2.1 | Planification de l'implémentation | 4d? | 2010-03-05 A | 2010-03-08 A |  | 100% |  |  |  | finish no earlier than 2010-03-08 |  | Francois Gervais | 32h | 32h |
| 37 | 3.2.2 | Programmation du squelette du moteur | 1d? | 2010-03-09 A | 2010-03-09 A | 36 | 100% |  |  |  |  |  | Francois Gervais | 8h | 8h |
| 38 | 3.2.3 | Test du Tile rendering et scrolling | 1d? | 2010-04-26 A | 2010-04-26 A |  | 100% |  |  |  | start no earlier than 2010-04-26 |  | Francois Gervais | 8h | 8h |
| 39 | 3.2.4 | Travail sur le background rendering | 1d? | 2010-04-27 A | 2010-04-27 A |  | 100% |  |  |  | start no earlier than 2010-04-27 |  | Francois Gervais | 8h | 8h |
| 40 | 3.2.5 | Optimisation du background rendering | 1d? | 2010-04-28 A | 2010-04-28 A |  | 100% |  |  |  | start no earlier than 2010-04-28 |  | Francois Gervais | 8h | 8h |
| 41 | 3.2.6 | Gestion du hero | 26d? | 2010-04-29 A | 2010-05-24 A |  | 100% |  |  |  | finish no earlier than 2010-05-24 |  | Francois Gervais | 208h | 208h |
| 42 | 3.2.7 | Gestion des ennemis | 8d? | 2010-05-17 A | 2010-05-24 A |  | 100% |  |  |  | finish no earlier than 2010-05-24 |  | Francois Gervais | 64h | 64h |
| 43 | 3.2.8 | Gestion des collisions | 3d? | 2010-05-18 A | 2010-05-20 A |  | 100% |  |  |  | finish no earlier than 2010-05-20 |  | Francois Gervais | 24h | 24h |
| 44 | 3.2.9 | Gestion des effets sonors | 2d? | 2010-05-23 A | 2010-05-24 A |  | 100% |  |  |  | finish no earlier than 2010-05-24 |  | Francois Gervais | 16h | 16h |
| 45 | 3.2.10 | Réfection de la gestion des états | 1d? | 2009-12-27 | 2009-12-27 |  |  |  | 220d |  |  |  | Francois Gervais | 8h |  |
| 46 | 3.2.11 | Optimisation | 7d? | 2010-07-11 | 2010-07-17 |  |  |  | 18d |  | finish no earlier than 2010-07-17 |  |  |  |  |
| 47 | 3.3 | **Développement de jeux** | 19d? | 2010-04-30 A | 2010-05-18 A |  | 100% |  |  |  |  |  |  | 112h | 112h |
| 48 | 3.3.1 | Création du SVN | 1d? | 2010-04-30 A | 2010-04-30 A |  | 100% |  |  |  | start no earlier than 2010-04-30 |  | Sébastien Fournier | 8h | 8h |
| 49 | 3.3.2 | Synchronisation avec le SVN de la console | 13d? | 2010-05-06 A | 2010-05-18 A |  | 100% |  |  |  | finish no earlier than 2010-05-18 |  | Sébastien Fournier | 104h | 104h |
| 50 | 3.4 | **Développement matériel** | 90d? | 2010-04-20 | 2010-07-18 |  |  |  | -52d | 0d |  | 2010-05-27 | Jimmy Vaillancourt | 1288h |  |
| 51 | 3.4.1 | Conception du PCB | 55d? | 2010-04-20 | 2010-06-13 |  |  |  | -17d | 0d | start no earlier than 2010-04-20 |  | Jimmy Vaillancourt | 440h |  |
| 52 | 3.4.2 | Test du circuit R2R | 9d? | 2010-05-29 | 2010-06-06 |  |  |  | -10d | 0d | finish no earlier than 2010-06-06 |  | Jimmy Vaillancourt | 72h |  |
| 53 | 3.4.3 | Assemblage du PCB | 6d? | 2010-07-12 | 2010-07-17 |  |  |  | -51d | 0d | finish no earlier than 2010-07-17 |  | Jimmy Vaillancourt | 48h |  |
| 54 | 3.4.4 | Test du PCB | 1d? | 2010-07-18 | 2010-07-18 |  |  |  | -52d | 0d | start no earlier than 2010-07-18 |  | Jimmy Vaillancourt | 8h |  |
| 55 | 3.5 | Rédaction du rapport | 52d? | 2010-06-13 | 2010-08-03 |  |  |  | 1d |  | start no earlier than 2010-06-13 |  | Équipe Montréal | 416h |  |
| 56 | 3.6 | Présentation finale | 1d? | 2010-08-04 | 2010-08-04 |  |  |  | 0d |  | start no earlier than 2010-08-04 |  | Équipe Montréal | 8h |  |
