# Console

Schedule from MS Project, 2009-12-06 to 2010-08-04.

## Calendars

- Standard: Mon-Sun 08:00-12:00, 13:00-17:00.

## Resources

| Resource |
| --- |
| Francois Gervais |
| Jimmy Vaillancour |
| Sébastien Fournier |
| Simon Brassard |
| Alexandre Duperré |
| Steeve Simard |
| Émile Bergeron |
| Équipe Montréal |
| Équipe Chicoutimi |

## Schedule

| ID | WBS | Task | Duration | Start | Finish | Predecessors | Total slack | Free slack | Constraint | Resources | Work |
| --- | --- | --- | --- | --- | --- | --- | --- | --- | --- | --- | --- |
| 1 | 1 | Analyse de la problématique | 1d? | 2009-12-06 | 2009-12-06 |  | 169d |  |  |  |  |
| 2 | 2 | **Choix d'une solution** | 21d? | 2009-12-06 | 2009-12-26 |  | 123d |  |  |  | 168h |
| 3 | 2.1 | Choix du micro-controlleur | 21d? | 2009-12-06 | 2009-12-26 |  | 123d | 0d | finish no earlier than 2009-12-26 | Francois Gervais | 168h |
| 4 | 3 | **Réalisation** | 221d? | 2009-12-27 | 2010-08-04 | 3 | 0d |  |  |  | 3064h |
| 5 | 3.1 | **Développement bas niveau** | 210d? | 2009-12-27 | 2010-07-24 |  | 11d |  |  |  | 856h |
| 6 | 3.1.1 | Programmation du "bootstrap" | 1d? | 2009-12-27 | 2009-12-27 |  | 217d | 10d |  | Francois Gervais | 8h |
| 7 | 3.1.2 | Adaptation du Makefile | 1d? | 2009-12-31 | 2009-12-31 | 3 | 213d | 6d | start no earlier than 2009-12-31 | Francois Gervais | 8h |
| 8 | 3.1.3 | Adaptation du linker script | 1d? | 2010-01-02 | 2010-01-02 | 3 | 211d | 4d | start no earlier than 2010-01-02 | Francois Gervais | 8h |
| 9 | 3.1.4 | Intégration des GPIO à la couche d'abstraction | 3d? | 2010-01-07 | 2010-01-09 | 8, 7, 6 | 207d |  | finish no earlier than 2010-01-09 | Francois Gervais | 24h |
| 10 | 3.1.5 | Configuration du PLL | 1d? | 2010-01-09 | 2010-01-09 |  | 207d |  | start no earlier than 2010-01-09 | Francois Gervais | 8h |
| 11 | 3.1.6 | Configuration des interruptions | 10d? | 2010-01-13 | 2010-01-22 |  | 194d |  | finish no earlier than 2010-01-22 | Francois Gervais | 80h |
| 12 | 3.1.7 | Initialisation du module USB | 4d? | 2010-01-22 | 2010-01-25 |  | 191d |  | finish no earlier than 2010-01-25 | Francois Gervais | 32h |
| 13 | 3.1.8 | Attente de réception de la carte de développement | 24d? | 2010-01-25 | 2010-02-17 |  | 167d | 0d | finish no earlier than 2010-02-17 | Francois Gervais | 192h |
| 14 | 3.1.9 | Test de la section Gpio | 1d? | 2010-02-18 | 2010-02-18 | 13 | 167d |  | start no earlier than 2010-02-18 | Francois Gervais | 8h |
| 15 | 3.1.10 | Test de l'initialisation USB | 1d? | 2010-02-21 | 2010-02-21 |  | 164d |  | start no earlier than 2010-02-21 | Francois Gervais | 8h |
| 16 | 3.1.11 | Programmation du module LCD | 4d? | 2010-02-22 | 2010-02-25 |  | 158d | 0d | finish no earlier than 2010-02-25 | Francois Gervais | 32h |
| 17 | 3.1.12 | Programmation du module SDRAM | 2d? | 2010-02-24 | 2010-02-25 |  | 158d | 0d | finish no earlier than 2010-02-25 | Francois Gervais | 16h |
| 18 | 3.1.13 | Implémentation de la class DisplayHelper pour l'affichage d'image | 2d? | 2010-02-26 | 2010-02-27 | 17, 16 | 158d |  | finish no earlier than 2010-02-27 | Francois Gervais | 16h |
| 19 | 3.1.14 | Test d'une image animée sur le LCD | 1d? | 2010-02-28 | 2010-02-28 |  | 157d |  | start no earlier than 2010-02-28 | Francois Gervais | 8h |
| 20 | 3.1.15 | Travail sur l'affichage de police à l'écran | 4d? | 2010-03-05 | 2010-03-08 |  | 149d |  | finish no earlier than 2010-03-08 | Francois Gervais | 32h |
| 21 | 3.1.16 | Modification de la configuration du PLL | 1d? | 2010-03-23 | 2010-03-23 |  | 134d |  | start no earlier than 2010-03-23 | Francois Gervais | 8h |
| 22 | 3.1.17 | Configuration du module pour carte SD | 3d? | 2010-03-25 | 2010-03-27 |  | 130d |  | finish no earlier than 2010-03-27 | Francois Gervais | 24h |
| 23 | 3.1.18 | Implémentation du support FAT32 | 3d? | 2010-03-25 | 2010-03-27 |  | 130d |  | finish no earlier than 2010-03-27 | Francois Gervais | 24h |
| 24 | 3.1.19 | Prise en charge des fichier Bitmap | 1d? | 2010-03-30 | 2010-03-30 |  | 127d |  | start no earlier than 2010-03-30 | Francois Gervais | 8h |
| 25 | 3.1.20 | Gestion du sons (sync) | 1d? | 2010-04-03 | 2010-04-03 |  | 123d |  | start no earlier than 2010-04-03 | Francois Gervais | 8h |
| 26 | 3.1.21 | Prise en charge des fichier Wave | 1d? | 2010-04-03 | 2010-04-03 |  | 123d |  | start no earlier than 2010-04-03 | Francois Gervais | 8h |
| 27 | 3.1.22 | Travail sur le DMA | 1d? | 2010-03-13 | 2010-03-13 |  | 144d |  | start no earlier than 2010-03-13 | Francois Gervais | 8h |
| 28 | 3.1.23 | Gestion du sons (async) | 2d? | 2010-05-23 | 2010-05-24 |  | 72d |  | finish no earlier than 2010-05-24 | Francois Gervais | 16h |
| 29 | 3.1.24 | Intégration des timers dans la couche d'abstraction | 2d? | 2010-05-23 | 2010-05-24 |  | 72d |  | finish no earlier than 2010-05-24 | Francois Gervais | 16h |
| 30 | 3.1.25 | Prise en charge du USB | 25d? | 2010-05-26 | 2010-06-19 |  | 46d |  | start no earlier than 2010-05-26 | Francois Gervais | 200h |
| 31 | 3.1.26 | Contrôlleur Xbox360 | 7d? | 2010-06-20 | 2010-06-26 |  | 39d |  | finish no earlier than 2010-06-26 | Francois Gervais | 56h |
| 32 | 3.1.27 | Découplage du moteur et du noyau | 14d? | 2010-06-27 | 2010-07-10 |  | 25d |  | finish no earlier than 2010-07-10 |  |  |
| 33 | 3.1.28 | Optimisation | 7d? | 2010-07-11 | 2010-07-17 |  | 18d |  | finish no earlier than 2010-07-17 |  |  |
| 34 | 3.1.29 | Intégration de FreeRTOS (au besoin) | 7d? | 2010-07-18 | 2010-07-24 |  | 11d |  | finish no earlier than 2010-07-24 |  |  |

| ID | WBS | Task | Duration | Start | Finish | Predecessors | Total slack | Free slack | Constraint | Resources | Work |
| --- | --- | --- | --- | --- | --- | --- | --- | --- | --- | --- | --- |
| 35 | 3.2 | **Développement du moteur de jeux** | 203d? | 2009-12-27 | 2010-07-17 |  | 18d |  |  | Francois Gervais | 2008h |
| 36 | 3.2.1 | Planification de l'implémentation | 4d? | 2010-03-05 | 2010-03-08 |  | 147d | 0d | finish no earlier than 2010-03-08 | Francois Gervais | 32h |
| 37 | 3.2.2 | Programmation du squelette du moteur | 1d? | 2010-03-09 | 2010-03-09 | 36 | 147d |  |  | Francois Gervais | 8h |
| 38 | 3.2.3 | Test du Tile rendering et scrolling | 1d? | 2010-04-26 | 2010-04-26 |  | 99d |  | start no earlier than 2010-04-26 | Francois Gervais | 8h |
| 39 | 3.2.4 | Travail sur le background rendering | 1d? | 2010-04-27 | 2010-04-27 |  | 98d |  | start no earlier than 2010-04-27 | Francois Gervais | 8h |
| 40 | 3.2.5 | Optimisation du background rendering | 1d? | 2010-04-28 | 2010-04-28 |  | 97d |  | start no earlier than 2010-04-28 | Francois Gervais | 8h |
| 41 | 3.2.6 | Gestion du hero | 26d? | 2010-04-29 | 2010-05-24 |  | 71d |  | finish no earlier than 2010-05-24 | Francois Gervais | 208h |
| 42 | 3.2.7 | Gestion des ennemis | 8d? | 2010-05-17 | 2010-05-24 |  | 71d |  | finish no earlier than 2010-05-24 | Francois Gervais | 64h |
| 43 | 3.2.8 | Gestion des collisions | 3d? | 2010-05-18 | 2010-05-20 |  | 75d |  | finish no earlier than 2010-05-20 | Francois Gervais | 24h |
| 44 | 3.2.9 | Gestion des effets sonors | 2d? | 2010-05-23 | 2010-05-24 |  | 71d |  | finish no earlier than 2010-05-24 | Francois Gervais | 16h |
| 45 | 3.2.10 | Réfection de la gestion des états | 1d? | 2009-12-27 | 2009-12-27 |  | 219d |  |  | Francois Gervais | 8h |
| 46 | 3.2.11 | Optimisation | 7d? | 2010-07-11 | 2010-07-17 |  | 17d |  | finish no earlier than 2010-07-17 |  |  |
| 47 | 3.3 | **Développement de jeux** | 19d? | 2010-04-30 | 2010-05-18 |  | 78d |  |  |  | 112h |
| 48 | 3.3.1 | Création du SVN | 1d? | 2010-04-30 | 2010-04-30 |  | 57d |  | start no earlier than 2010-04-30 | Sébastien Fournier | 8h |
| 49 | 3.3.2 | Synchronisation avec le SVN de la console | 13d? | 2010-05-06 | 2010-05-18 |  | 39d |  | finish no earlier than 2010-05-18 | Sébastien Fournier | 104h |
| 50 | 3.4 | Rédaction du rapport | 10d? | 2010-07-25 | 2010-08-03 |  | 1d |  | finish no earlier than 2010-08-03 | Équipe Montréal | 80h |
| 51 | 3.5 | Présentation finale | 1d? | 2010-08-04 | 2010-08-04 |  | 0d |  | start no earlier than 2010-08-04 | Équipe Montréal | 8h |
